# PipingInternational

Schedule from MS Project, 2022-02-07 to 2022-04-12, costs in $, A marks actual dates.

## Calendars

- Standard: Mon-Fri 08:00-12:00, 13:00-17:00; Sat-Sun off.

## Resources

| Resource | Rate |
| --- | --- |
| Chad Johnson | 50 |
| Terry Allenye | 200 |
| Victor Nguyen | 46 |
| Kyle Cortez | 48 |
| Noah Hendricks | 46 |
| Jose Zelaya | 48 |
| Prof. Detillier | 150 |

## Schedule

| ID | WBS | Task | Type | Duration | Start | Finish | Predecessors | Complete | Resources | Work | Actual work | Cost | Actual cost |
| --- | --- | --- | --- | --- | --- | --- | --- | --- | --- | --- | --- | --- | --- |
| 1 | 1 | **Project Scope** |  | 3.5d | 2022-02-07 A | 2022-02-10 A |  | 100% |  | 20h | 20h | 2,200 | 2,200 |
| 2 | 1.1 | Determine project scope |  | 0.5d | 2022-02-07 A | 2022-02-07 A |  | 100% | Terry Allenye | 4h | 4h | 800 | 800 |
| 3 | 1.2 | Secure project sponsorship |  | 0.5d | 2022-02-07 A | 2022-02-07 A | 2 | 100% | Terry Allenye | 4h | 4h | 800 | 800 |
| 4 | 1.3 | Define preliminary resources |  | 1d | 2022-02-08 A | 2022-02-09 A | 3 | 100% | Chad Johnson | 8h | 8h | 400 | 400 |
| 5 | 1.4 | Secure core resources |  | 0.5d | 2022-02-09 A | 2022-02-09 A | 4 | 100% | Chad Johnson | 4h | 4h | 200 | 200 |
| 6 | 1.5 | Scope complete | milestone | 0d | 2022-02-10 A | 2022-02-10 A | 5 | 100% | Chad Johnson |  |  |  |  |
| 7 | 2 | **Analysis/Software Requirements** |  | 7.5d | 2022-02-10 A | 2022-02-21 A |  | 100% |  | 68h | 68h | 4,496 | 4,496 |
| 8 | 2.1 | Conduct needs analysis |  | 0.5d | 2022-02-10 A | 2022-02-10 A | 6 | 100% | Jose Zelaya | 4h | 4h | 192 | 192 |
| 9 | 2.2 | Draft preliminary software specifications |  | 1d | 2022-02-11 A | 2022-02-11 A | 8 | 100% | Victor Nguyen | 8h | 8h | 368 | 368 |
| 10 | 2.3 | Develop preliminary budget |  | 1d | 2022-02-14 A | 2022-02-14 A | 9 | 100% | Kyle Cortez | 8h | 8h | 384 | 384 |
| 11 | 2.4 | Review software specifications/budget with team |  | 1d | 2022-02-15 A | 2022-02-15 A | 10 | 100% | Kyle Cortez | 8h | 8h | 384 | 384 |
| 12 | 2.5 | Incorporate feedback on software specifications |  | 1d | 2022-02-16 A | 2022-02-16 A | 11 | 100% | Victor Nguyen | 8h | 8h | 368 | 368 |
| 13 | 2.6 | Develop delivery timeline |  | 1d | 2022-02-17 A | 2022-02-17 A | 12 | 100% | Chad Johnson | 8h | 8h | 400 | 400 |
| 14 | 2.7 | Obtain approvals to proceed (concept, timeline, budget) |  | 1d | 2022-02-18 A | 2022-02-18 A | 13 | 100% | Chad Johnson; Terry Allenye | 16h | 16h | 2,000 | 2,000 |
| 15 | 2.8 | Secure required resources |  | 1d | 2022-02-21 A | 2022-02-21 A | 14 | 100% | Chad Johnson | 8h | 8h | 400 | 400 |
| 16 | 2.9 | Analysis complete | milestone | 0d | 2022-02-21 A | 2022-02-21 A | 15 | 100% |  |  |  |  |  |
| 17 | 3 | **Database Design** |  | 5.5d | 2022-02-22 A | 2022-03-01 A |  | 100% |  | 60h | 60h | 3,272 | 3,272 |
| 18 | 3.1 | Determine entities |  | 1d | 2022-02-22 A | 2022-02-22 A | 16 | 100% | Chad Johnson | 8h | 8h | 400 | 400 |
| 19 | 3.2 | Define entities and attributes |  | 1d | 2022-02-23 A | 2022-02-23 A | 18 | 100% | Noah Hendricks | 8h | 8h | 368 | 368 |
| 20 | 3.3 | Draft ERD |  | 1d | 2022-02-24 A | 2022-02-24 A | 19 | 100% | Noah Hendricks | 8h | 8h | 368 | 368 |
| 21 | 3.4 | Compare ERD with Business Rules |  | 1d | 2022-02-25 A | 2022-02-25 A | 20 | 100% | Noah Hendricks | 8h | 8h | 368 | 368 |
| 22 | 3.5 | Normalize ERD |  | 1d | 2022-02-28 A | 2022-02-28 A | 21 | 100% |  |  |  |  |  |
| 23 | 3.6 | Create Data dictionary |  | 1d | 2022-02-24 A | 2022-02-24 A | 22 | 100% | Noah Hendricks | 8h | 8h | 368 | 368 |
| 24 | 3.7 | Incorporate feedback into functional specifications |  | 1d | 2022-02-25 A | 2022-02-25 A | 23 | 100% | Chad Johnson | 8h | 8h | 400 | 400 |
| 25 | 3.8 | Approve Data Dictionary + ERD |  | 1d | 2022-02-28 A | 2022-02-28 A | 24 | 100% | Chad Johnson | 8h | 8h | 400 | 400 |
| 26 | 3.9 | Obtain approval to proceed |  | 0.5d | 2022-03-01 A | 2022-03-01 A | 25 | 100% | Prof. Detillier | 4h | 4h | 600 | 600 |
| 27 | 3.10 | Design complete | milestone | 0d | 2022-03-01 A | 2022-03-01 A | 26 | 100% |  |  |  |  |  |

| ID | WBS | Task | Type | Duration | Start | Finish | Predecessors | Complete | Actual finish | Constraint | Resources | Work | Actual work | Cost | Actual cost |
| --- | --- | --- | --- | --- | --- | --- | --- | --- | --- | --- | --- | --- | --- | --- | --- |
| 28 | 4 | **Application Development** |  | 7.5d | 2022-03-01 A | 2022-03-10 A | 27 | 100% |  |  |  | 244h | 244h | 11,720 | 11,720 |
| 29 | 4.1 | **Application Design** |  | 3d | 2022-03-01 A | 2022-03-04 A | 27 | 100% |  |  |  | 24h | 24h | 1,200 | 1,200 |
| 30 | 4.1.1 | Create high level application work flow |  | 1d | 2022-03-01 A | 2022-03-02 A |  | 100% |  |  | Chad Johnson | 8h | 8h | 400 | 400 |
| 31 | 4.1.2 | Identify what information goes on each page |  | 1d | 2022-03-02 A | 2022-03-03 A | 30 | 100% |  |  | Chad Johnson | 8h | 8h | 400 | 400 |
| 32 | 4.1.3 | Identify functions |  | 1d | 2022-03-03 A | 2022-03-04 A | 31 | 100% |  |  | Chad Johnson | 8h | 8h | 400 | 400 |
| 33 | 4.2 | **GUI Design** |  | 1d | 2022-03-04 A | 2022-03-07 A | 32 | 100% |  |  |  | 32h | 32h | 1,504 | 1,504 |
| 34 | 4.2.1 | Design layout of pages/forms |  | 1d | 2022-03-04 A | 2022-03-07 A |  | 100% |  |  | Jose Zelaya | 8h | 8h | 384 | 384 |
| 35 | 4.2.2 | Break apart layout of pages |  | 1d | 2022-03-04 A | 2022-03-07 A |  | 100% |  |  | Victor Nguyen | 8h | 8h | 368 | 368 |
| 36 | 4.2.3 | Write code for forms |  | 1d | 2022-03-04 A | 2022-03-07 A |  | 100% |  |  | Jose Zelaya; Victor Nguyen | 16h | 16h | 752 | 752 |
| 37 | 4.3 | **Coding** |  | 7d | 2022-03-01 A | 2022-03-10 |  | 100% | 2022-03-02 |  |  | 32h | 32h | 1,520 | 1,520 |
| 38 | 4.3.1 | Code pages of forms in HTML |  | 1d | 2022-03-01 A | 2022-03-02 A | 26 | 100% |  |  | Noah Hendricks | 8h | 8h | 368 | 368 |
| 39 | 4.3.2 | Write queries for pages |  | 1d | 2022-03-01 A | 2022-03-02 A |  | 100% |  |  | Jose Zelaya | 8h | 8h | 384 | 384 |
| 40 | 4.3.3 | Code the functions |  | 1d | 2022-03-01 A | 2022-03-02 A |  | 100% |  |  | Kyle Cortez | 8h | 8h | 384 | 384 |
| 41 | 4.3.4 | Review code for security issues |  | 1d | 2022-03-01 A | 2022-03-02 A |  | 100% |  |  | Kyle Cortez | 8h | 8h | 384 | 384 |
| 42 | 4.4 | Review functional specifications |  | 0.5d | 2022-03-01 A | 2022-03-01 A | 34 | 100% |  | finish no earlier than 2022-03-02 | Chad Johnson | 4h | 4h | 200 | 200 |
| 43 | 4.5 | Identify modular/tiered design parameters |  | 2d | 2022-03-02 A | 2022-03-03 A | 42 | 100% |  |  | Chad Johnson | 16h | 16h | 800 | 800 |
| 44 | 4.6 | Assign development staff |  | 5d | 2022-03-04 A | 2022-03-10 A | 43 | 100% |  |  | Chad Johnson | 40h | 40h | 2,000 | 2,000 |
| 45 | 4.7 | Develop code |  | 5d | 2022-03-01 A | 2022-03-08 A |  | 100% |  |  | Kyle Cortez; Noah Hendricks | 80h | 80h | 3,760 | 3,760 |
| 46 | 4.8 | Developer testing (primary debugging) |  | 2d | 2022-03-02 A | 2022-03-04 A | 45FS-7.5% | 100% |  |  | Victor Nguyen | 16h | 16h | 736 | 736 |
| 47 | 4.9 | Development complete | milestone | 0d | 2022-03-04 A | 2022-03-04 A | 46 | 100% |  |  | Chad Johnson |  |  |  |  |
| 48 | 5 | **Reports** |  | 5d | 2022-03-10 A | 2022-03-17 A |  | 100% |  |  |  | 40h | 40h | 3,072 | 3,072 |
| 49 | 5.1 | Identify what reports to add to the application |  | 1d | 2022-03-10 A | 2022-03-11 A | 46 | 100% |  |  | Victor Nguyen | 8h | 8h | 368 | 368 |
| 50 | 5.2 | Verify reports satisfy user requirements |  | 1d | 2022-03-11 A | 2022-03-14 A | 49 | 100% |  |  | Victor Nguyen | 8h | 8h | 368 | 368 |
| 51 | 5.3 | Write queries for reports |  | 1d | 2022-03-14 A | 2022-03-15 A | 50 | 100% |  |  | Noah Hendricks | 8h | 8h | 368 | 368 |
| 52 | 5.4 | Write code for reports |  | 1d | 2022-03-15 A | 2022-03-16 A | 51 | 100% |  |  | Victor Nguyen | 8h | 8h | 368 | 368 |
| 53 | 5.5 | Sponsors approval of application |  | 1d | 2022-03-16 A | 2022-03-17 A | 52 | 100% |  |  | Terry Allenye | 8h | 8h | 1,600 | 1,600 |

| ID | WBS | Task | Type | Duration | Start | Finish | Predecessors | Complete | Constraint | Resources | Work | Actual work | Cost | Actual cost |
| --- | --- | --- | --- | --- | --- | --- | --- | --- | --- | --- | --- | --- | --- | --- |
| 54 | 6 | **Testing** |  | 16.5d | 2022-03-01 A | 2022-03-23 A |  | 100% |  |  | 104h | 104h | 4,880 | 4,880 |
| 55 | 6.1 | Develop unit test plans using product specifications |  | 1d | 2022-03-01 A | 2022-03-02 A | 27 | 100% |  | Victor Nguyen | 8h | 8h | 368 | 368 |
| 56 | 6.2 | Develop integration test plans using product specifications |  | 1d | 2022-03-01 A | 2022-03-02 A | 27 | 100% | finish no earlier than 2022-03-01 | Noah Hendricks | 8h | 8h | 368 | 368 |
| 57 | 6.3 | **Unit Testing** |  | 5d | 2022-03-14 A | 2022-03-18 A |  | 100% |  |  | 40h | 40h | 1,872 | 1,872 |
| 58 | 6.3.1 | Review modular code |  | 1d | 2022-03-14 A | 2022-03-14 A | 55, 47 | 100% | start no earlier than 2022-03-14 | Kyle Cortez | 8h | 8h | 384 | 384 |
| 59 | 6.3.2 | Test component modules to product specifications |  | 1d | 2022-03-15 A | 2022-03-15 A | 47, 58 | 100% |  | Noah Hendricks | 8h | 8h | 368 | 368 |
| 60 | 6.3.3 | Identify anomalies to product specifications |  | 1d | 2022-03-16 A | 2022-03-16 A | 59 | 100% |  | Noah Hendricks | 8h | 8h | 368 | 368 |
| 61 | 6.3.4 | Modify code |  | 1d | 2022-03-17 A | 2022-03-17 A | 60 | 100% |  | Kyle Cortez | 8h | 8h | 384 | 384 |
| 62 | 6.3.5 | Re-test modified code |  | 1d | 2022-03-18 A | 2022-03-18 A | 61 | 100% |  | Noah Hendricks | 8h | 8h | 368 | 368 |
| 63 | 6.3.6 | Unit testing complete | milestone | 0d | 2022-03-18 A | 2022-03-18 A | 62 | 100% |  | Noah Hendricks |  |  |  |  |
| 64 | 6.4 | **Integration Testing** |  | 3d | 2022-03-21 A | 2022-03-23 A |  | 100% |  | Kyle Cortez | 48h | 48h | 2,272 | 2,272 |
| 65 | 6.4.1 | Test module integration |  | 1d | 2022-03-21 A | 2022-03-21 A | 63 | 100% |  | Victor Nguyen | 8h | 8h | 368 | 368 |
| 66 | 6.4.2 | Identify anomalies to specifications | milestone | 0d | 2022-03-21 A | 2022-03-21 A | 65 | 100% |  | Jose Zelaya |  |  |  |  |
| 67 | 6.4.3 | Modify code |  | 1d | 2022-03-22 A | 2022-03-22 A | 66 | 100% |  | Kyle Cortez | 8h | 8h | 384 | 384 |
| 68 | 6.4.4 | Re-test modified code |  | 1d | 2022-03-23 A | 2022-03-23 A | 67 | 100% |  | Noah Hendricks | 8h | 8h | 368 | 368 |
| 69 | 6.4.5 | Integration testing complete | milestone | 0d | 2022-03-23 A | 2022-03-23 A | 68 | 100% |  |  |  |  |  |  |
| 70 | 7 | **Training** |  | 7.25d | 2022-03-01 A | 2022-03-10 A |  | 100% |  |  | 56h | 56h | 2,576 | 2,576 |
| 71 | 7.1 | Develop training specifications for end users |  | 1d | 2022-03-01 A | 2022-03-02 A | 27 | 100% |  | Victor Nguyen | 8h | 8h | 368 | 368 |
| 72 | 7.2 | Develop training specifications for helpdesk support staff |  | 1d | 2022-03-01 A | 2022-03-02 A | 27 | 100% |  | Victor Nguyen | 8h | 8h | 368 | 368 |
| 73 | 7.3 | Identify training delivery methodology (computer based training, classroom, etc.) |  | 1d | 2022-03-01 A | 2022-03-02 A | 27 | 100% |  | Victor Nguyen | 8h | 8h | 368 | 368 |
| 74 | 7.4 | Develop training materials |  | 1d | 2022-03-04 A | 2022-03-07 A | 71, 47, 72, 73 | 100% |  | Victor Nguyen | 8h | 8h | 368 | 368 |
| 75 | 7.5 | Conduct training usability study |  | 1d | 2022-03-07 A | 2022-03-08 A | 74 | 100% |  | Victor Nguyen | 8h | 8h | 368 | 368 |
| 76 | 7.6 | Finalize training materials |  | 1d | 2022-03-08 A | 2022-03-09 A | 75 | 100% |  | Victor Nguyen | 8h | 8h | 368 | 368 |
| 77 | 7.7 | Develop training delivery mechanism |  | 1d | 2022-03-09 A | 2022-03-10 A | 76 | 100% |  | Victor Nguyen | 8h | 8h | 368 | 368 |
| 78 | 7.8 | Training materials complete | milestone | 0d | 2022-03-10 A | 2022-03-10 A | 77 | 100% |  |  |  |  |  |  |

| ID | WBS | Task | Type | Duration | Start | Finish | Predecessors | Complete | Resources | Work | Actual work | Cost | Actual cost |
| --- | --- | --- | --- | --- | --- | --- | --- | --- | --- | --- | --- | --- | --- |
| 79 | 8 | **Documentation** |  | 9.5d | 2022-03-01 A | 2022-03-14 A |  | 100% |  | 128h | 128h | 6,144 | 6,144 |
| 80 | 8.1 | Develop Help specification |  | 1d | 2022-03-01 A | 2022-03-02 A | 27 | 100% | Jose Zelaya | 8h | 8h | 384 | 384 |
| 81 | 8.2 | Develop Help system |  | 2d | 2022-03-04 A | 2022-03-07 A | 80, 45FS-5% | 100% | Kyle Cortez | 16h | 16h | 768 | 768 |
| 82 | 8.3 | Review Help documentation |  | 3d | 2022-03-08 A | 2022-03-10 A | 81 | 100% | Jose Zelaya | 24h | 24h | 1,152 | 1,152 |
| 83 | 8.4 | Incorporate Help documentation feedback |  | 2d | 2022-03-11 A | 2022-03-14 A | 82 | 100% | Jose Zelaya | 16h | 16h | 768 | 768 |
| 84 | 8.5 | Develop user manuals specifications |  | 2d | 2022-03-01 A | 2022-03-03 A | 27 | 100% | Jose Zelaya | 16h | 16h | 768 | 768 |
| 85 | 8.6 | Develop user manuals |  | 2d | 2022-03-04 A | 2022-03-07 A | 84, 45FS-5% | 100% | Jose Zelaya | 16h | 16h | 768 | 768 |
| 86 | 8.7 | Review all user documentation |  | 2d | 2022-03-08 A | 2022-03-09 A | 85 | 100% | Jose Zelaya | 16h | 16h | 768 | 768 |
| 87 | 8.8 | Incorporate user documentation feedback |  | 2d | 2022-03-10 A | 2022-03-11 A | 86 | 100% | Jose Zelaya | 16h | 16h | 768 | 768 |
| 88 | 8.9 | Documentation complete | milestone | 0d | 2022-03-14 A | 2022-03-14 A | 87, 83 | 100% |  |  |  |  |  |
| 89 | 9 | **Pilot** |  | 26d | 2022-02-22 A | 2022-03-29 A |  | 100% |  | 56h | 56h | 2,704 | 2,704 |
| 90 | 9.1 | Identify test group |  | 1d | 2022-02-22 A | 2022-02-22 A | 16 | 100% | Chad Johnson | 8h | 8h | 400 | 400 |
| 91 | 9.2 | Develop software delivery mechanism |  | 1d | 2022-02-23 A | 2022-02-23 A | 90 | 100% | Kyle Cortez | 8h | 8h | 384 | 384 |
| 92 | 9.3 | Install/deploy software |  | 1d | 2022-03-24 A | 2022-03-24 A | 69, 91, 88, 78 | 100% | Victor Nguyen | 8h | 8h | 368 | 368 |
| 93 | 9.4 | Obtain user feedback |  | 2d | 2022-03-25 A | 2022-03-28 A | 92 | 100% | Chad Johnson | 16h | 16h | 800 | 800 |
| 94 | 9.5 | Evaluate testing information |  | 1d | 2022-03-29 A | 2022-03-29 A | 93 | 100% | Kyle Cortez; Noah Hendricks | 16h | 16h | 752 | 752 |
| 95 | 9.6 | Pilot complete | milestone | 0d | 2022-03-29 A | 2022-03-29 A | 94 | 100% |  |  |  |  |  |
| 96 | 10 | **Deployment** |  | 5d | 2022-03-30 A | 2022-04-05 A |  | 100% |  | 48h | 48h | 2,272 | 2,272 |
| 97 | 10.1 | Determine final deployment strategy |  | 1d | 2022-03-30 A | 2022-03-30 A | 95 | 100% | Jose Zelaya | 8h | 8h | 384 | 384 |
| 98 | 10.2 | Develop deployment methodology |  | 1d | 2022-03-31 A | 2022-03-31 A | 97 | 100% | Jose Zelaya | 8h | 8h | 384 | 384 |
| 99 | 10.3 | Secure deployment resources |  | 1d | 2022-04-01 A | 2022-04-01 A | 98 | 100% | Jose Zelaya | 8h | 8h | 384 | 384 |
| 100 | 10.4 | Train support staff |  | 1d | 2022-04-04 A | 2022-04-04 A | 99 | 100% | Kyle Cortez; Noah Hendricks | 16h | 16h | 752 | 752 |
| 101 | 10.5 | Deploy software |  | 1d | 2022-04-05 A | 2022-04-05 A | 100 | 100% | Victor Nguyen | 8h | 8h | 368 | 368 |
| 102 | 10.6 | Deployment complete | milestone | 0d | 2022-04-05 A | 2022-04-05 A | 101 | 100% |  |  |  |  |  |

| ID | WBS | Task | Type | Duration | Start | Finish | Predecessors | Complete | Constraint | Resources | Work | Actual work | Cost | Actual cost |
| --- | --- | --- | --- | --- | --- | --- | --- | --- | --- | --- | --- | --- | --- | --- |
| 103 | 11 | **Post Implementation Review** |  | 5d | 2022-04-06 A | 2022-04-12 A |  | 100% |  |  | 32h | 32h | 1,536 | 1,536 |
| 104 | 11.1 | Document lessons learned |  | 1d | 2022-04-06 A | 2022-04-06 A | 102 | 100% |  | Noah Hendricks | 8h | 8h | 368 | 368 |
| 105 | 11.2 | Distribute to team members |  | 2d | 2022-04-07 A | 2022-04-08 A | 104 | 100% |  | Chad Johnson | 16h | 16h | 800 | 800 |
| 106 | 11.3 | Create software maintenance team |  | 1d | 2022-04-11 A | 2022-04-11 A | 105 | 100% | finish no earlier than 2022-04-11 | Noah Hendricks | 8h | 8h | 368 | 368 |
| 107 | 11.4 | Post implementation review complete |  | 1d | 2022-04-12 A | 2022-04-12 A | 106 | 100% |  |  |  |  |  |  |
| 108 | 12 | Project Close | milestone | 0d | 2022-04-12 A | 2022-04-12 A | 107 | 100% | finish no earlier than 2022-04-12 |  |  |  |  |  |
